# Office Remodel Multiple Resources

Schedule from MS Project, 2019-01-28 to 2019-03-06, costs in $.
P8 LLC

## Calendars

- Standard: Mon-Fri 08:00-12:00, 13:00-17:00; Sat-Sun off.

## Resources

| Resource | Unit | Rate |
| --- | --- | --- |
| Toby Nixon |  | 30 |
| Lori Kane |  | 30 |
| Run Liu |  | 20 |
| electrician |  | 60 |
| plumber |  | 60 |
| drywall | sheet | 11 |
| drywall screws | 1 pound | 7 |
| John Emory |  | 35 |
| scaffolding |  | 9.38 |
| table saw |  | 10 |

## Schedule

| ID | WBS | Task | Duration | Start | Finish | Predecessors | Total slack | Resources | Work | Cost |
| --- | --- | --- | --- | --- | --- | --- | --- | --- | --- | --- |
| 1 | 1 | **Prep** | 0.5d | 2019-01-28 | 2019-01-28 |  | 0d |  |  |  |
| 2 | 1.1 | Remove existing furniture | 0.5d | 2019-01-28 | 2019-01-28 |  | 0d |  |  |  |
| 3 | 1.2 | Remove existing appliances | 0.5d | 2019-01-28 | 2019-01-28 |  | 0d |  |  |  |
| 4 | 2 | **Demolition** | 5d | 2019-01-28 | 2019-02-04 |  | 0d |  | 32h | 1,040 |
| 5 | 2.1 | Remove existing ceiling | 1d | 2019-01-28 | 2019-01-29 | 2, 3 | 0d |  |  |  |
| 6 | 2.2 | Tear out inside dividing walls | 2d | 2019-01-29 | 2019-01-31 | 5 | 0d |  |  |  |
| 7 | 2.3 | Remove drywall from main walls | 2d | 2019-01-31 | 2019-02-04 | 6 | 0d | John Emory; Toby Nixon | 32h | 1,040 |
| 8 | 3 | **Construction** | 13d | 2019-02-04 | 2019-02-21 |  | 0d |  |  |  |
| 9 | 3.1 | Install interior stud walls | 3d | 2019-02-04 | 2019-02-07 | 7 | 0d |  |  |  |
| 10 | 3.2 | Re-run electrical in all stud walls | 1d | 2019-02-07 | 2019-02-08 | 9 | 0d |  |  |  |
| 11 | 3.3 | Re-run plumbing for sink and icemaker | 1d | 2019-02-07 | 2019-02-08 | 9 | 0d |  |  |  |
| 12 | 3.4 | Install drywall | 5d | 2019-02-08 | 2019-02-15 | 10, 11 | 0d |  |  |  |
| 13 | 3.5 | Install ceiling grid | 3d | 2019-02-15 | 2019-02-20 | 12 | 0d |  |  |  |
| 14 | 3.6 | Install ceiling tile | 1d | 2019-02-20 | 2019-02-21 | 13 | 0d |  |  |  |
| 15 | 4 | **Finishing Work** | 9.5d | 2019-02-21 | 2019-03-06 |  | 0d |  | 64h | 1,600 |
| 16 | 4.1 | Paint walls and woodwork | 4d | 2019-02-21 | 2019-02-27 | 14 | 0d | Run Liu; Toby Nixon | 64h | 1,600 |
| 17 | 4.2 | Install new floor tile | 3d | 2019-02-27 | 2019-03-04 | 16 | 0d |  |  |  |
| 18 | 4.3 | Re-install appliances | 1d | 2019-03-04 | 2019-03-05 | 17 | 0d |  |  |  |
| 19 | 4.4 | Final cleaning | 1d | 2019-03-05 | 2019-03-06 | 18 | 0d |  |  |  |
| 20 | 4.5 | Re-install furniture | 0.5d | 2019-03-06 | 2019-03-06 | 19 | 0d |  |  |  |
