# Tailspin Remote Drone Revised Deadlines

Schedule from MS Project, 2019-01-07 to 2019-05-23, costs in $.

## Calendars

- Standard: Mon-Fri 08:00-12:00, 13:00-17:00; Sat-Sun off. Exceptions (off unless hours are given): 2019-01-21 to 2021-01-18 (Martin Luther King Jr. Day , recurring).
- Survey Calendar: Mon-Sat 10:00-14:00, 15:00-19:00; Sun off. Exceptions (off unless hours are given): 2019-01-21 to 2021-01-18 (Martin Luther King Jr. Day , recurring).

## Resources

| Resource | Group | Unit | Rate | Cost per use | Notes |
| --- | --- | --- | --- | --- | --- |
| Jamie Reding | Engineering |  | 37.5 |  | Jamie on vacation Jan 14 and 15; available for consult at home if necessary |
| Scott Seely | Marketing |  | 22.5 |  |  |
| Jeff Pike | Marketing |  | 25 |  |  |
| Judy Lew | Management |  | 29.5 |  |  |
| Brenda Diaz | Admininstrative |  | 19.75 |  |  |
| Brad Sutton | Marketing |  | 16.5 |  |  |
| Annette Hill | Administrative |  | 20 |  |  |
| Ryan Ihrig | Marketing |  | 16 |  |  |
| Yan Li |  |  | 28.5 |  |  |
| Model technician | Manufacturing |  | 16.5 |  |  |
| Digital camera | Equipment |  | 7.5 | 20 |  |
| Anemometer | Equipment |  | 0.5 |  |  |
| Safety tether | Equipment |  | 0.12 |  |  |
| Clipboards | Supplies |  |  |  |  |
| Large Conference Room | Facilities |  |  |  |  |
| Small Conference Room | Facilities |  |  |  |  |
| SD Card | Equipment | 4 GB | 12 |  |  |
| Printer paper | Supplies | Ream | 4 |  |  |
| Travel | Cost |  |  |  |  |
| Food | Cost |  |  |  |  |
| Bottled water | Supplies | case | 5 |  |  |
| Pens | Supplies | 12 count box | 3 |  |  |
| Survey Team Member | Marketing |  | 15 |  |  |
| Shu Ito | HR |  | 35 |  |  |
| Maria Hammond | Quality |  | 27.5 |  |  |
| Jim Kim | Quality |  | 28 |  |  |
| Bjorn Rettig | Engineering |  | 35 |  |  |
| Florian Voss | PMO |  | 37.5 |  |  |
| Jane Clayton | Manufacturing |  | 42.5 |  |  |
| Greg Guzik | Manufacturing |  | 32 |  |  |
| David Barber | Engineering |  | 43.75 |  |  |
| Eva Corets | Administrative |  | 15 |  |  |
| Frank Zhang | Management |  | 50 |  |  |
| Testing Field | Facilities |  |  |  |  |

## Schedule

| ID | WBS | Task | Type | Duration | Start | Finish | Predecessors | Total slack | Free slack | Constraint | Deadline | Calendar | Resources | Work | Cost |
| --- | --- | --- | --- | --- | --- | --- | --- | --- | --- | --- | --- | --- | --- | --- | --- |
| 1 | 1 | **Target Market Research and Analysis** |  | 29.62d | 2019-01-07 08:00 | 2019-02-18 14:00 |  | -3.24d | 0d |  |  |  |  | 652.74h | 18,033.8 |
| 2 | 1.1 | **Research** |  | 29.62d | 2019-01-07 08:00 | 2019-02-18 14:00 |  | -3.24d | 0d |  |  |  |  | 400.14h | 11,331.55 |
| 3 | 1.1.1 | Research begins | milestone | 0d | 2019-01-07 08:00 | 2019-01-07 08:00 |  | -3.24d | 0d |  |  |  |  |  |  |
| 4 | 1.1.2 | **Surveys** |  | 8d | 2019-01-07 08:00 | 2019-01-16 19:00 |  | -3.24d | 0d |  |  |  |  | 126.14h | 2,742.3 |
| 5 | 1.1.2.1 | Develop survey questionnaire |  | 2.24d | 2019-01-07 08:00 | 2019-01-08 16:56 | 3 | -3.24d | 0d |  |  |  | Scott Seely; Jeff Pike; Annette Hill [50%]; Brad Sutton | 48h | 1,003.73 |
| 6 | 1.1.2.2 | Review and approval of survey |  | 1h | 2019-01-08 16:56 | 2019-01-09 08:56 | 5 | -3.24d | 0d |  |  |  | Jeff Pike | 1h | 25 |
| 7 | 1.1.2.3 | Conduct survey |  | 1.2w | 2019-01-09 10:00 | 2019-01-16 19:00 | 6 | 107d |  |  |  | Survey Calendar | Judy Lew [50%]; Scott Seely [57.1%]; Annette Hill [28.6%]; Ryan Ihrig [57.1%]; Bottled water [0.06 case] | 77.14h | 1,713.57 |
| 8 | 1.1.3 | **Focus Groups** |  | 11.88d | 2019-01-09 08:56 | 2019-01-25 17:00 |  | -3.24d | 0d |  |  |  |  | 144h | 3,228 |
| 9 | 1.1.3.1 | Identify focus group member demographics |  | 1d | 2019-01-09 08:56 | 2019-01-10 08:56 | 6 | -3.24d | 0d |  | 2019-01-10 17:00 |  | Jeff Pike; Yan Li; Brenda Diaz | 24h | 478 |
| 10 | 1.1.3.2 | Contact potential focus group members |  | 5.12d | 2019-01-10 08:56 | 2019-01-17 09:56 | 9 | -3.24d | 0d |  |  |  | Survey Team Member; Brad Sutton | 80h | 1,260 |
| 11 | 1.1.3.3 | Conduct focus groups |  | 1w | 2019-01-14 08:00 | 2019-01-25 17:00 | 10 | -3.24d | 0d | start no later than 2019-01-14 08:00 |  |  | Food [0.1%]; Judy Lew [50%]; Annette Hill [50%] | 40h | 1,490 |
| 12 | 1.1.4 | **Observations** |  | 15.62d | 2019-01-28 08:00 | 2019-02-18 14:00 |  | 1d |  |  |  |  |  | 130h | 5,361.25 |
| 13 | 1.1.4.1 | Identify observation parameters |  | 4h | 2019-01-28 08:00 | 2019-01-28 12:00 | 11 | 1d | 0d |  |  |  | Brenda Diaz; Brad Sutton | 8h | 145 |
| 14 | 1.1.4.2 | Select observation locations |  | 1h | 2019-01-28 13:00 | 2019-01-28 14:00 | 13 | 1d | 0d |  |  |  | Brad Sutton; Brenda Diaz | 2h | 36.25 |
| 15 | 1.1.4.3 | Conduct observations |  | 3w | 2019-01-28 14:00 | 2019-02-18 14:00 | 14 | 1d | 0d |  |  |  | Food [0.1%]; Jamie Reding [50%]; Jeff Pike [50%]; Judy Lew [50%]; Travel [0.2%] | 120h | 5,180 |
| 16 | 1.1.5 | Research complete | milestone | 0d | 2019-02-18 14:00 | 2019-02-18 14:00 | 15 | 67.42d |  |  |  |  |  |  |  |
| 17 | 1.2 | **Analysis** |  | 13.75d | 2019-01-28 14:00 | 2019-02-15 11:00 |  | 1d |  |  |  |  |  | 252.6h | 6,702.25 |
| 18 | 1.2.1 | Analysis begins | milestone | 0d | 2019-01-28 14:00 | 2019-01-28 14:00 | 15SS | 1d | 0d |  |  |  |  |  |  |
| 19 | 1.2.2 | **Analysis of Research Data** |  | 7.75d | 2019-01-28 14:00 | 2019-02-07 11:00 |  | 1d |  |  |  |  |  | 162.6h | 4,285.25 |
| 20 | 1.2.2.1 | Analyze surveys, focus groups, and observations |  | 2.12d | 2019-01-28 14:00 | 2019-01-30 10:00 | 18 | 1d | 0d |  |  |  | Jamie Reding; David Barber; Scott Seely; Ryan Ihrig | 54.6h | 1,615.25 |
| 21 | 1.2.2.2 | Create follow up actions for secondary research |  | 1d | 2019-01-30 10:00 | 2019-01-31 10:00 | 20 | 1d | 0d |  |  |  | Annette Hill [50%]; Brenda Diaz; Brad Sutton; Eva Corets | 28h | 490 |
| 22 | 1.2.2.3 | Conduct secondary research |  | 1.02w | 2019-01-31 10:00 | 2019-02-07 11:00 | 21 | 1d | 0d |  |  |  | Jeff Pike; Judy Lew | 80h | 2,180 |
| 23 | 1.2.3 | **Report of Research Findings** |  | 7d | 2019-02-06 11:00 | 2019-02-15 11:00 |  | 1d |  |  |  |  |  | 90h | 2,417 |
| 24 | 1.2.3.1 | Compile draft copy of report |  | 8h | 2019-02-06 11:00 | 2019-02-07 11:00 | 22FF | 1d | 0d |  |  |  | Brenda Diaz | 8h | 158 |
| 25 | 1.2.3.2 | Draft copy review period |  | 5d | 2019-02-07 11:00 | 2019-02-14 11:00 | 24 | 1d | 0d |  |  |  | Bjorn Rettig [50%]; Brad Sutton [75%] | 50h | 1,195 |
| 26 | 1.2.3.3 | Review comments and compile final report |  | 1d | 2019-02-14 11:00 | 2019-02-15 11:00 | 25 | 1d | 0d |  |  |  | Brenda Diaz; David Barber; Jamie Reding; Greg Guzik | 32h | 1,064 |
| 27 | 1.2.4 | Analysis complete | milestone | 0d | 2019-02-15 11:00 | 2019-02-15 11:00 | 26 | 1d | 0d |  | 2019-02-22 17:00 |  |  |  |  |

Notes:
- 7: Contact Mark Hanson in Marketing for additional resource support.

| ID | WBS | Task | Type | Duration | Start | Finish | Predecessors | Total slack | Free slack | Constraint | Deadline | Resources | Work | Cost |
| --- | --- | --- | --- | --- | --- | --- | --- | --- | --- | --- | --- | --- | --- | --- |
| 28 | 2 | **Design** |  | 14.5d | 2019-02-15 11:00 | 2019-03-07 16:00 |  | 1d |  |  | 2019-03-08 17:00 |  | 390h | 8,991 |
| 29 | 2.1 | Design begins | milestone | 0d | 2019-02-15 11:00 | 2019-02-15 11:00 | 27 | 1d | 0d |  |  |  |  |  |
| 30 | 2.2 | Research Findings Evaluation |  | 2d | 2019-02-15 11:00 | 2019-02-19 14:00 | 29 | 1d | 0d |  |  | Jamie Reding; Judy Lew; Maria Hammond; David Barber | 32h | 1,106 |
| 31 | 2.3 | Design Document |  | 2d | 2019-02-19 14:00 | 2019-02-21 14:00 | 30 | 1d | 0d |  |  | Jamie Reding; Brenda Diaz | 32h | 916 |
| 32 | 2.4 | Proof of Concept |  | 2w | 2019-02-21 14:00 | 2019-03-07 14:00 | 31 | 1d | 0d |  |  | Model technician; Maria Hammond; Greg Guzik; SD Card [0.03 4 GB]; Digital camera | 320h | 6,730 |
| 33 | 2.5 | Final Design Selection |  | 2h | 2019-03-07 14:00 | 2019-03-07 16:00 | 32 | 1d | 0d |  |  | Frank Zhang; Greg Guzik; Jamie Reding | 6h | 239 |
| 34 | 2.6 | Design complete | milestone | 0d | 2019-03-07 16:00 | 2019-03-07 16:00 | 33 | 1d | 0d |  |  |  |  |  |
| 35 | 3 | **Product Development** |  | 27.5d | 2019-03-07 16:00 | 2019-04-16 11:00 |  | 0d |  |  |  |  | 876h | 18,522 |
| 36 | 3.1 | Product development begins | milestone | 0d | 2019-03-07 16:00 | 2019-03-07 16:00 | 34 | 1d | 0d |  |  |  |  |  |
| 37 | 3.2 | Initial Prototype |  | 1.02w | 2019-03-07 16:00 | 2019-03-14 17:00 | 36 | 1d |  |  |  | Model technician [200%]; Jamie Reding; Jane Clayton | 120h | 3,860 |
| 38 | 3.3 | Internal Testing |  | 2w | 2019-03-18 08:00 | 2019-03-29 17:00 | 37 | 0d |  | start no earlier than 2019-03-18 08:00 |  | Maria Hammond; Jim Kim; Model technician; Jamie Reding [25%]; Testing Field; SD Card [1 4 GB]; Digital camera | 420h | 7,142 |
| 39 | 3.4 | Raw Materials List |  | 9h | 2019-04-01 08:00 | 2019-04-02 09:00 | 38 | 0d |  |  |  | Jamie Reding; Eva Corets | 16h | 420 |
| 40 | 3.5 | Parts Designation |  | 2.05w | 2019-04-02 09:00 | 2019-04-16 11:00 | 39 | 0d |  |  |  | Eva Corets; Jamie Reding; Brad Sutton; Brenda Diaz | 320h | 7,100 |
| 41 | 3.6 | Product development complete | milestone | 0d | 2019-04-16 11:00 | 2019-04-16 11:00 | 40 | 0d |  |  | 2019-04-19 17:00 |  |  |  |
| 42 | 4 | **Production Planning** |  | 9.38d | 2019-04-16 11:00 | 2019-04-29 15:00 |  | 0d |  |  |  |  | 380h | 10,971 |
| 43 | 4.1 | Production planning begins | milestone | 0d | 2019-04-16 11:00 | 2019-04-16 11:00 | 41 | 0d |  |  |  |  |  |  |
| 44 | 4.2 | High-level Production Plan |  | 5.12d | 2019-04-16 11:00 | 2019-04-23 12:00 | 43 | 0d |  |  |  | Bjorn Rettig; Eva Corets; Frank Zhang; Jane Clayton; Large Conference Room; Model technician | 240h | 6,360 |
| 45 | 4.3 | Resource Planning |  | 3d | 2019-04-23 13:00 | 2019-04-26 12:00 | 44 | 0d |  |  |  | Judy Lew; Frank Zhang; Jamie Reding; Eva Corets; Bjorn Rettig | 120h | 4,008 |
| 46 | 4.4 | Quality Control Design |  | 1d | 2019-04-26 13:00 | 2019-04-29 12:00 | 45 | 0d |  |  |  | Maria Hammond; Jim Kim | 16h | 444 |
| 47 | 4.5 | Final Production Plan Approval |  | 2h | 2019-04-29 13:00 | 2019-04-29 15:00 | 46 | 0d |  |  |  | Judy Lew; Frank Zhang | 4h | 159 |
| 48 | 4.6 | Production planning complete | milestone | 0d | 2019-04-29 15:00 | 2019-04-29 15:00 | 47 | 0d |  |  | 2019-04-30 17:00 |  |  |  |
| 49 | 5 | **Marketing** |  | 17.3d | 2019-04-29 15:00 | 2019-05-23 08:24 |  | 0d |  |  |  |  | 646.8h | 13,902.25 |
| 50 | 5.1 | Marketing phase begins | milestone | 0d | 2019-04-29 15:00 | 2019-04-29 15:00 | 48 | 0d |  |  |  |  |  |  |
| 51 | 5.2 | Marketing Strategy Development |  | 1.18d | 2019-04-29 15:00 | 2019-04-30 14:24 | 50 | 0d |  |  |  | Scott Seely; Brad Sutton; Brenda Diaz | 22.8h | 448.25 |
| 52 | 5.3 | Marketing Plan Development and Approval |  | 1d | 2019-04-30 14:24 | 2019-05-01 14:24 | 51 | 0d |  |  |  | Frank Zhang; Judy Lew; Ryan Ihrig | 24h | 764 |
| 53 | 5.4 | Marketing Materials |  | 3.08w | 2019-05-01 14:24 | 2019-05-23 08:24 | 52 | 0d |  |  |  | Jeff Pike; Brenda Diaz; Brad Sutton; Ryan Ihrig; Yan Li | 600h | 12,690 |
| 54 | 5.5 | Marketing phase complete | milestone | 0d | 2019-05-23 08:24 | 2019-05-23 08:24 | 53 | 0d |  |  | 2019-05-28 17:00 |  |  |  |

| ID | WBS | Task | Duration | Start | Finish | Total slack | Constraint | Resources | Work | Cost |
| --- | --- | --- | --- | --- | --- | --- | --- | --- | --- | --- |
| 55 | 6 | **Project Management** | 94.12d | 2019-01-07 08:00 | 2019-05-20 09:00 | 2.92d |  |  | 100h | 2,820 |
| 56 | 6.1 | **Status Meeting** | 94.12d | 2019-01-07 08:00 | 2019-05-20 09:00 | 2.92d |  |  | 100h | 2,820 |
| 57 | 6.1.1 | Status Meeting 1 | 1h | 2019-01-07 08:00 | 2019-01-07 09:00 | 96.92d | start no earlier than 2019-01-07 08:00 | Brad Sutton; Eva Corets; Jane Clayton; Judy Lew; Florian Voss | 5h | 141 |
| 58 | 6.1.2 | Status Meeting 2 | 1h | 2019-01-14 08:00 | 2019-01-14 09:00 | 91.92d | start no earlier than 2019-01-14 08:00 | Brad Sutton; Eva Corets; Jane Clayton; Judy Lew; Florian Voss | 5h | 141 |
| 59 | 6.1.3 | Status Meeting 3 | 1h | 2019-01-22 08:00 | 2019-01-22 09:00 | 86.92d | start no earlier than 2019-01-21 08:00 | Brad Sutton; Eva Corets; Jane Clayton; Judy Lew; Florian Voss | 5h | 141 |
| 60 | 6.1.4 | Status Meeting 4 | 1h | 2019-01-28 08:00 | 2019-01-28 09:00 | 82.92d | start no earlier than 2019-01-28 08:00 | Brad Sutton; Eva Corets; Jane Clayton; Judy Lew; Florian Voss | 5h | 141 |
| 61 | 6.1.5 | Status Meeting 5 | 1h | 2019-02-04 08:00 | 2019-02-04 09:00 | 77.92d | start no earlier than 2019-02-04 08:00 | Brad Sutton; Eva Corets; Jane Clayton; Judy Lew; Florian Voss | 5h | 141 |
| 62 | 6.1.6 | Status Meeting 6 | 1h | 2019-02-11 08:00 | 2019-02-11 09:00 | 72.92d | start no earlier than 2019-02-11 08:00 | Brad Sutton; Eva Corets; Jane Clayton; Judy Lew; Florian Voss | 5h | 141 |
| 63 | 6.1.7 | Status Meeting 7 | 1h | 2019-02-18 08:00 | 2019-02-18 09:00 | 67.92d | start no earlier than 2019-02-18 08:00 | Brad Sutton; Eva Corets; Jane Clayton; Judy Lew; Florian Voss | 5h | 141 |
| 64 | 6.1.8 | Status Meeting 8 | 1h | 2019-02-25 08:00 | 2019-02-25 09:00 | 62.92d | start no earlier than 2019-02-25 08:00 | Brad Sutton; Eva Corets; Jane Clayton; Judy Lew; Florian Voss | 5h | 141 |
| 65 | 6.1.9 | Status Meeting 9 | 1h | 2019-03-04 08:00 | 2019-03-04 09:00 | 57.92d | start no earlier than 2019-03-04 08:00 | Brad Sutton; Eva Corets; Jane Clayton; Judy Lew; Florian Voss | 5h | 141 |
| 66 | 6.1.10 | Status Meeting 10 | 1h | 2019-03-11 08:00 | 2019-03-11 09:00 | 52.92d | start no earlier than 2019-03-11 08:00 | Brad Sutton; Eva Corets; Jane Clayton; Judy Lew; Florian Voss | 5h | 141 |
| 67 | 6.1.11 | Status Meeting 11 | 1h | 2019-03-18 08:00 | 2019-03-18 09:00 | 47.92d | start no earlier than 2019-03-18 08:00 | Brad Sutton; Eva Corets; Jane Clayton; Judy Lew; Florian Voss | 5h | 141 |
| 68 | 6.1.12 | Status Meeting 12 | 1h | 2019-03-25 08:00 | 2019-03-25 09:00 | 42.92d | start no earlier than 2019-03-25 08:00 | Brad Sutton; Eva Corets; Jane Clayton; Judy Lew; Florian Voss | 5h | 141 |
| 69 | 6.1.13 | Status Meeting 13 | 1h | 2019-04-01 08:00 | 2019-04-01 09:00 | 37.92d | start no earlier than 2019-04-01 08:00 | Brad Sutton; Eva Corets; Jane Clayton; Judy Lew; Florian Voss | 5h | 141 |
| 70 | 6.1.14 | Status Meeting 14 | 1h | 2019-04-08 08:00 | 2019-04-08 09:00 | 32.92d | start no earlier than 2019-04-08 08:00 | Brad Sutton; Eva Corets; Jane Clayton; Judy Lew; Florian Voss | 5h | 141 |
| 71 | 6.1.15 | Status Meeting 15 | 1h | 2019-04-15 08:00 | 2019-04-15 09:00 | 27.93d | start no earlier than 2019-04-15 08:00 | Brad Sutton; Eva Corets; Jane Clayton; Judy Lew; Florian Voss | 5h | 141 |
| 72 | 6.1.16 | Status Meeting 16 | 1h | 2019-04-22 08:00 | 2019-04-22 09:00 | 22.93d | start no earlier than 2019-04-22 08:00 | Brad Sutton; Eva Corets; Jane Clayton; Judy Lew; Florian Voss | 5h | 141 |
| 73 | 6.1.17 | Status Meeting 17 | 1h | 2019-04-29 08:00 | 2019-04-29 09:00 | 17.93d | start no earlier than 2019-04-29 08:00 | Brad Sutton; Eva Corets; Jane Clayton; Judy Lew; Florian Voss | 5h | 141 |
| 74 | 6.1.18 | Status Meeting 18 | 1h | 2019-05-06 08:00 | 2019-05-06 09:00 | 12.93d | start no earlier than 2019-05-06 08:00 | Brad Sutton; Eva Corets; Jane Clayton; Judy Lew; Florian Voss | 5h | 141 |
| 75 | 6.1.19 | Status Meeting 19 | 1h | 2019-05-13 08:00 | 2019-05-13 09:00 | 7.92d | start no earlier than 2019-05-13 08:00 | Brad Sutton; Eva Corets; Jane Clayton; Judy Lew; Florian Voss | 5h | 141 |
| 76 | 6.1.20 | Status Meeting 20 | 1h | 2019-05-20 08:00 | 2019-05-20 09:00 | 2.92d | start no earlier than 2019-05-20 08:00 | Brad Sutton; Eva Corets; Jane Clayton; Judy Lew; Florian Voss | 5h | 141 |
